# Network Integration Project 2nd Attempt

Schedule from MS Project, 2025-10-13 to 2027-12-06.
Victoria University

## Calendars

- Standard: Mon-Fri 08:00-12:00, 13:00-17:00; Sat-Sun off.

## Resources

| Resource |
| --- |
| Project Manager |
| Business Analyst |
| Technical Lead |
| Data Engineer |
| Integration Engineer |
| QA |
| Change Manager |
| Trainers |
| SMEs |
| Executive Sponsor |
| Operations |
| Finance |
| Users |
| Team |

## Schedule

| ID | WBS | Task | Type | Duration | Start | Finish | Predecessors | Total slack | Resources | Work |
| --- | --- | --- | --- | --- | --- | --- | --- | --- | --- | --- |
| 1 | 1 | **Initiation** |  | 28d | 2025-10-13 | 2025-11-20 |  | 0d |  | 336h |
| 2 | 1.1 | Kick-off & stakeholder register | manual | 7d | 2025-10-13 | 2025-10-21 |  |  | Business Analyst; Project Manager | 112h |
| 3 | 1.2 | Charter approval | manual | 7d | 2025-10-22 | 2025-10-30 | 2 |  | Executive Sponsor; Project Manager | 112h |
| 4 | 1.3 | Team formation & communications plan | manual | 14d | 2025-10-31 | 2025-11-19 | 3 |  | Project Manager | 112h |
| 5 | 1.4 | M1 – Project Initiation Approved | milestone, manual | 0d | 2025-11-20 | 2025-11-20 | 4 |  | Project Manager |  |
| 6 | 2 | **Requirements & Analysis** |  | 91d | 2025-11-20 | 2026-03-27 |  | 0d |  | 1400h |
| 7 | 2.1 | Requirements workshops | manual | 21d | 2025-11-20 | 2025-12-18 | 5 |  | Business Analyst; Project Manager; SMEs | 504h |
| 8 | 2.2 | As-Is process mapping | manual | 28d | 2025-12-19 | 2026-01-27 | 7 |  | Business Analyst | 224h |
| 9 | 2.3 | System & data assessment | manual | 21d | 2026-01-28 | 2026-02-25 | 8 |  | Data Engineer; Technical Lead | 336h |
| 10 | 2.4 | Gap analysis & prioritisation | manual | 14d | 2026-02-26 | 2026-03-17 | 9 |  | Business Analyst; Executive Sponsor | 224h |
| 11 | 2.5 | BRD / Requirements sign-off | manual | 7d | 2026-03-18 | 2026-03-26 | 10 |  | Business Analyst; Executive Sponsor | 112h |
| 12 | 2.6 | M2 – Requirements & Analysis Complete | milestone, manual | 0d | 2026-03-27 | 2026-03-27 | 11 |  | Project Manager |  |
| 13 | 3 | **Design & Planning** |  | 56d | 2026-03-27 | 2026-06-15 |  | 0d |  | 672h |
| 14 | 3.1 | Integration architecture & interfaces | manual | 21d | 2026-03-27 | 2026-04-24 | 12 |  | Technical Lead | 168h |
| 15 | 3.2 | Data migration & security plan | manual | 21d | 2026-04-27 | 2026-05-25 | 14 |  | Data Engineer; Technical Lead | 336h |
| 16 | 3.3 | WBS & schedule baseline (MSP) | manual | 7d | 2026-05-26 | 2026-06-03 | 15 |  | Project Manager | 56h |
| 17 | 3.4 | Pilot plan & success criteria | manual | 7d | 2026-06-04 | 2026-06-12 | 16 |  | Business Analyst; Project Manager | 112h |
| 18 | 3.5 | M3 – Design Approved | milestone, manual | 0d | 2026-06-15 | 2026-06-15 | 17 |  | Project Manager |  |
| 19 | 4 | **Build & Data Migration** |  | 168d | 2026-06-15 | 2027-02-04 |  | 0d |  | 2184h |
| 20 | 4.1 | Environment setup (dev/test/stage) | manual | 14d | 2026-06-15 | 2026-07-02 | 18 |  | Technical Lead | 112h |
| 21 | 4.2 | Configure integration components | manual | 56d | 2026-07-03 | 2026-09-18 | 20 |  | Integration Engineer; Technical Lead | 896h |
| 22 | 4.3 | Data cleansing & ETL scripting | manual | 42d | 2026-09-21 | 2026-11-17 | 21 |  | Data Engineer | 336h |
| 23 | 4.4 | Initial migration (pilot dataset) | manual | 21d | 2026-11-18 | 2026-12-16 | 22 |  | Data Engineer | 168h |
| 24 | 4.5 | System testing (unit & integration) | manual | 21d | 2026-12-17 | 2027-01-14 | 23 |  | QA; Technical Lead | 336h |
| 25 | 4.6 | UAT (pilot scope) | manual | 14d | 2027-01-15 | 2027-02-03 | 24 |  | Business Analyst; Project Manager; Users | 336h |
| 26 | 4.7 | M4 – Build & Migration Completed | milestone, manual | 0d | 2027-02-04 | 2027-02-04 | 25 |  | Project Manager |  |

| ID | WBS | Task | Type | Duration | Start | Finish | Predecessors | Total slack | Resources | Work |
| --- | --- | --- | --- | --- | --- | --- | --- | --- | --- | --- |
| 27 | 5 | **Pilot Implementation** |  | 84d | 2027-02-04 | 2027-06-02 |  | 0d |  | 1232h |
| 28 | 5.1 | Deploy to pilot depots | manual | 14d | 2027-02-04 | 2027-02-23 | 26 |  | Technical Lead | 112h |
| 29 | 5.2 | Pilot training & support | manual | 28d | 2027-02-24 | 2027-04-02 | 28 |  | Change Manager; Trainers | 448h |
| 30 | 5.3 | Monitor KPIs & feedback | manual | 21d | 2027-04-05 | 2027-05-03 | 29 |  | Business Analyst; Project Manager | 336h |
| 31 | 5.4 | Fixes & stabilisation | manual | 21d | 2027-05-04 | 2027-06-01 | 30 |  | QA; Technical Lead | 336h |
| 32 | 5.5 | M5 – Pilot Evaluation Complete | milestone, manual | 0d | 2027-06-02 | 2027-06-02 | 31 |  | Project Manager |  |
| 33 | 6 | **Full Rollout** |  | 105d | 2027-06-02 | 2027-10-27 |  | 0d |  | 1624h |
| 34 | 6.1 | Wave plan & readiness check | manual | 14d | 2027-06-02 | 2027-06-21 | 32 |  | Project Manager | 112h |
| 35 | 6.2 | National rollout waves | manual | 70d | 2027-06-22 | 2027-09-27 | 34 |  | Change Manager; Technical Lead | 1120h |
| 36 | 6.3 | Training at scale | manual | 14d | 2027-09-28 | 2027-10-15 | 35 |  | Change Manager; Trainers | 224h |
| 37 | 6.4 | Full data load & reconciliation | manual | 7d | 2027-09-28 | 2027-10-06 | 35 |  | Data Engineer | 56h |
| 38 | 6.5 | Operational acceptance | manual | 7d | 2027-10-18 | 2027-10-26 | 36, 37 |  | Executive Sponsor; Operations | 112h |
| 39 | 6.6 | M6 – Full Integration Complete | milestone, manual | 0d | 2027-10-27 | 2027-10-27 | 38 |  | Project Manager |  |
| 40 | 7 | **Closure** |  | 28d | 2027-10-27 | 2027-12-06 |  | 0d |  | 448h |
| 41 | 7.1 | Handover & support pack | manual | 14d | 2027-10-27 | 2027-11-15 | 39 |  | Project Manager; Technical Lead | 224h |
| 42 | 7.2 | Benefits tracking hand-off | manual | 7d | 2027-11-16 | 2027-11-24 | 41 |  | Finance; Project Manager | 112h |
| 43 | 7.3 | Lessons learned & closure report | manual | 7d | 2027-11-25 | 2027-12-03 | 42 |  | Project Manager; Team | 112h |
| 44 | 7.4 | M7 – Project Closure Approved | milestone, manual | 0d | 2027-12-06 | 2027-12-06 | 43 |  | Project Manager |  |
